# Implement new Accounting System

Schedule from MS Project, 2024-07-01 to 2024-11-28, costs in $.
Financial Institution

## Calendars

- Standard: Mon-Fri 08:00-12:00, 13:00-17:00; Sat-Sun off.

## Resources

| Resource | Rate |
| --- | --- |
| Project Manager | 85 |
| Business Analyst | 70 |
| Software Developer | 75 |
| Data Migration Specialist | 70 |
| Trainer | 60 |
| Quality Assurance Analyst | 65 |
| Vendor Consultant | 100 |
| Training Material Developer | 55 |
| Finance Manager | 80 |
| IT manager | 90 |

## Schedule

| ID | WBS | Task | Duration | Start | Finish | Predecessors | Total slack | Free slack | Constraint | Resources | Work | Cost |
| --- | --- | --- | --- | --- | --- | --- | --- | --- | --- | --- | --- | --- |
| 1 | 1 | **Selecting a software Vendors** | 37d | 2024-07-01 | 2024-08-20 |  | 0d |  |  |  | 296h | 22,680 |
| 2 | 1.1 | Identify Potential Vendors | 5d | 2024-07-01 | 2024-07-05 |  | 0d |  | start no earlier than 2024-06-30 | Business Analyst | 40h | 2,800 |
| 3 | 1.2 | Request Proposals | 7d | 2024-07-08 | 2024-07-16 | 2 | 0d |  | start no earlier than 2024-06-30 | Business Analyst | 56h | 3,920 |
| 4 | 1.3 | Evaluate Proposals | 10d | 2024-07-17 | 2024-07-30 | 3 | 0d |  | start no earlier than 2024-06-30 | Business Analyst | 80h | 5,600 |
| 5 | 1.4 | Conduct Vendor demonstrations | 7d | 2024-07-31 | 2024-08-08 | 4 | 0d |  | start no earlier than 2024-06-30 | IT manager | 56h | 5,040 |
| 6 | 1.5 | Select Vendors | 3d | 2024-08-09 | 2024-08-13 | 5 | 0d |  | start no earlier than 2024-06-30 | Finance Manager | 24h | 1,920 |
| 7 | 1.6 | Negociate and finalise contract | 5d | 2024-08-14 | 2024-08-20 | 6 | 0d |  | start no earlier than 2024-06-30 | Project Manager | 40h | 3,400 |
| 8 | 2 | **Configuring the system** | 44d | 2024-08-21 | 2024-10-21 |  | 0d |  |  |  | 320h | 24,400 |
| 9 | 2.1 | Develop Configuration plan | 5d | 2024-08-21 | 2024-08-27 | 7 | 0d |  | start no earlier than 2024-06-30 | IT manager | 40h | 3,600 |
| 10 | 2.2 | Configure system settings | 10d | 2024-08-28 | 2024-09-10 | 9 | 0d |  | start no earlier than 2024-06-30 | Software Developer | 80h | 6,000 |
| 11 | 2.3 | Customize features | 15d | 2024-09-11 | 2024-10-01 | 10 | 0d |  | start no earlier than 2024-06-30 | Software Developer | 120h | 9,000 |
| 12 | 2.4 | Test Confuguration | 7d | 2024-10-08 | 2024-10-16 | 11 | 0d |  | start no earlier than 2024-06-30 | Quality Assurance Analyst | 56h | 3,640 |
| 13 | 2.5 | Finalize system confuguration | 3d | 2024-10-17 | 2024-10-21 | 12 | 0d |  | start no earlier than 2024-06-30 | IT manager | 24h | 2,160 |
| 14 | 3 | **Migrating Data** | 34d | 2024-08-21 | 2024-10-07 |  | 3d |  |  |  | 272h | 18,840 |
| 15 | 3.1 | Plan Data Migration | 7d | 2024-08-21 | 2024-08-29 | 7 | 3d | 0d | start no earlier than 2024-06-30 | Data Migration Specialist | 56h | 3,920 |
| 16 | 3.2 | Extract data from old system | 5d | 2024-08-30 | 2024-09-05 | 15 | 3d | 0d | start no earlier than 2024-06-30 | Data Migration Specialist | 40h | 2,800 |
| 17 | 3.3 | Clean and transform data | 10d | 2024-09-06 | 2024-09-19 | 16 | 3d | 0d | start no earlier than 2024-06-30 | Data Migration Specialist | 80h | 5,600 |
| 18 | 3.4 | Load data into new system | 7d | 2024-09-20 | 2024-09-30 | 17 | 3d | 0d | start no earlier than 2024-06-30 | Data Migration Specialist | 56h | 3,920 |
| 19 | 3.5 | Verify Data integrity | 5d | 2024-10-01 | 2024-10-07 | 18 | 3d | 0d | start no earlier than 2024-06-30 | Quality Assurance Analyst | 40h | 2,600 |
| 20 | 4 | **Training Staff** | 28d | 2024-10-22 | 2024-11-28 |  | 0d |  |  |  | 224h | 13,240 |
| 21 | 4.1 | Develop training materials | 10d | 2024-10-22 | 2024-11-04 | 13 | 0d |  | start no earlier than 2024-06-30 | Training Material Developer | 80h | 4,400 |
| 22 | 4.2 | Schedule traing sessions | 3d | 2024-11-05 | 2024-11-07 | 21 | 0d |  | start no earlier than 2024-06-30 | Trainer | 24h | 1,440 |
| 23 | 4.3 | Conduct training sessions | 10d | 2024-11-08 | 2024-11-21 | 22 | 0d |  | start no earlier than 2024-06-30 | Trainer | 80h | 4,800 |
| 24 | 4.4 | Evaluate training effectiveness | 5d | 2024-11-22 | 2024-11-28 | 23 | 0d |  | start no earlier than 2024-06-30 | Quality Assurance Analyst | 40h | 2,600 |

| ID | WBS | Task | Duration | Start | Finish | Predecessors | Total slack | Free slack | Constraint | Resources | Work | Cost |
| --- | --- | --- | --- | --- | --- | --- | --- | --- | --- | --- | --- | --- |
| 25 | 5 | **Ensuring a smooth transition** | 35d | 2024-10-08 | 2024-11-25 |  | 3d |  |  |  | 280h | 23,800 |
| 26 | 5.1 | Develop transition plan | 5d | 2024-10-08 | 2024-10-14 | 19 | 3d | 0d | start no earlier than 2024-06-30 | Project Manager | 40h | 3,400 |
| 27 | 5.2 | Execute transition plan | 10d | 2024-10-15 | 2024-10-28 | 26 | 3d | 0d | start no earlier than 2024-06-30 | Project Manager | 80h | 6,800 |
| 28 | 5.3 | Monitor post-transition performance | 15d | 2024-10-29 | 2024-11-18 | 27 | 3d | 0d | start no earlier than 2024-06-30 | Project Manager | 120h | 10,200 |
| 29 | 5.4 | Conduct final review | 5d | 2024-11-19 | 2024-11-25 | 28 | 3d |  | start no earlier than 2024-06-30 | Project Manager | 40h | 3,400 |
